# Rocket-Star_B

Schedule from MS Project, 2012-01-23 to 2013-05-31.

## Calendars

- Padrão: Mon-Fri 09:00-12:00, 13:00-18:00; Sat-Sun off.

## Schedule

| ID | Task | Duration | Start | Finish | Predecessors | Baseline start | Baseline finish | Baseline duration | Total slack | Free slack |
| --- | --- | --- | --- | --- | --- | --- | --- | --- | --- | --- |
| 1 | 1 - Design | 7w | 2012-01-23 | 2012-03-09 |  | 2012-01-23 | 2012-03-16 | 8w | 0d |  |
| 2 | 2 - Project management | 40w | 2012-01-23 | 2012-10-26 |  | 2012-01-23 | 2013-01-04 | 50w | 155d |  |
| 3 | 3 - Steel support development | 6w | 2012-03-12 | 2012-04-20 | 1 | 2012-03-19 | 2012-05-04 | 7w | 0d |  |
| 4 | 4 - Track development | 7w | 2012-03-12 | 2012-04-27 | 1 | 2012-03-19 | 2012-04-27 | 6w | 15d | 0d |
| 5 | 5 - Car development | 7w | 2012-03-12 | 2012-04-27 | 1 | 2012-03-19 | 2012-05-04 | 7w | 15d | 0d |
| 6 | 6 - Electrical development | 6w | 2012-03-12 | 2012-04-20 | 1 | 2012-03-19 | 2012-04-20 | 5w | 20d | 0d |
| 7 | 7 - Building site prepration | 3w | 2012-03-12 | 2012-03-30 | 1 | 2012-03-19 | 2012-04-06 | 3w | 50d | 0d |
| 8 | 8 - Accelerator development | 4w | 2012-04-30 | 2012-05-25 | 3, 4, 5, 6 | 2012-05-07 | 2012-06-01 | 4w | 35d | 0d |
| 9 | 9 - Software Specification | 6w | 2012-04-30 | 2012-06-08 | 3, 4, 5, 6 | 2012-05-07 | 2012-06-15 | 6w | 15d | 0d |
| 10 | 10 - Sound system development | 7w | 2012-04-30 | 2012-06-15 | 3, 4, 5, 6 | 2012-05-07 | 2012-06-29 | 8w | 35d | 0d |
| 11 | 11 - Foundation excavation | 6w | 2012-04-02 | 2012-05-11 | 7 | 2012-04-09 | 2012-05-04 | 4w | 35d | 0d |
| 12 | 12 - Track manufacture | 5w | 2012-04-30 | 2012-06-01 | 4 | 2012-04-30 | 2012-06-01 | 5w | 20d | 0d |
| 13 | 13 - Car manufacture | 6w | 2012-04-30 | 2012-06-08 | 5 | 2012-05-07 | 2012-06-15 | 6w | 40d | 0d |
| 14 | 14 - Software programming | 21w | 2012-06-11 | 2012-11-02 | 9 | 2012-06-18 | 2012-11-09 | 21w | 20d | 0d |
| 15 | 15 - Doundation laying | 8w | 2012-05-14 | 2012-07-06 | 11 | 2012-05-07 | 2012-06-29 | 8w | 35d | 0d |
| 16 | 16 - Stell support production | 18w | 2012-04-23 | 2012-08-24 | 3 | 2012-05-07 | 2012-09-07 | 18w | 0d |  |
| 17 | 17 - Track production | 16w | 2012-06-04 | 2012-09-21 | 12 | 2012-06-04 | 2012-09-21 | 16w | 20d |  |
| 18 | 18 - Production of car 1 - prototype | 17w | 2012-06-11 | 2012-10-05 | 13 | 2012-06-18 | 2012-10-12 | 17w | 40d | 0d |
| 19 | 19 - Electrical production | 10w | 2012-04-23 | 2012-06-29 | 6 | 2012-04-23 | 2012-06-15 | 8w | 110d | 0d |
| 20 | 20 - Accelerator production | 20w | 2012-05-28 | 2012-10-12 | 8 | 2012-06-04 | 2012-10-19 | 20w | 40d | 0d |
| 21 | 21 - Software test | 4w | 2012-11-05 | 2012-11-30 | 14 | 2012-11-12 | 2012-12-07 | 4w | 20d | 0d |
| 22 | 22 - Sound system production | 15w | 2012-06-18 | 2012-09-28 | 10 | 2012-07-02 | 2012-10-12 | 15w | 35d | 0d |
| 23 | 23 - Building/Station production | 16w | 2012-07-09 | 2012-10-26 | 15 | 2012-07-02 | 2012-10-19 | 16w | 35d | 0d |
| 24 | 24 - Steel support assembly | 8w | 2012-08-27 | 2012-10-19 | 16 | 2012-09-10 | 2012-11-02 | 8w | 0d |  |
| 25 | 25 - Software documentation | 3w | 2012-12-03 | 2012-12-21 | 21 | 2012-12-10 | 2012-12-28 | 3w | 20d | 0d |
| 26 | 26 - Track assembly | 14w | 2012-10-22 | 2013-01-25 | 17, 24 | 2012-11-05 | 2013-02-08 | 14w | 0d |  |
| 27 | 27 - Assembly of car 1 - prototype | 9w | 2012-10-08 | 2012-12-07 | 18 | 2012-10-15 | 2012-12-14 | 9w | 40d |  |
| 28 | 28 - Electrical assembly | 7w | 2012-07-02 | 2012-08-17 | 19 | 2012-06-18 | 2012-08-03 | 7w | 115d |  |
| 29 | 29 - Accelerator assembly | 8w | 2012-10-15 | 2012-12-07 | 19, 20 | 2012-10-22 | 2012-12-14 | 8w | 40d |  |
| 30 | 30 - Software installation | 2w | 2012-12-24 | 2013-01-04 | 25 | 2012-12-31 | 2013-01-11 | 2w | 20d |  |
| 31 | 31 - Sound system assembly | 10w | 2012-10-01 | 2012-12-07 | 22 | 2012-10-15 | 2012-12-21 | 10w | 35d |  |
| 32 | 32 - Power sypply installation | 6w | 2012-10-29 | 2012-12-07 | 23 | 2012-10-22 | 2012-11-30 | 6w | 35d |  |
| 33 | 33 - Function test A | 3w | 2013-01-28 | 2013-02-15 | 26, 27, 28, 30, 31, 32, 29 | 2013-02-11 | 2013-03-01 | 3w | 0d |  |
| 34 | 34 - Function test B | 4w | 2013-01-28 | 2013-02-22 | 26, 27, 28, 30, 31, 32, 29 | 2013-02-11 | 2013-03-08 | 4w | 5d | 0d |
| 35 | 35 - Production of cars 2-4 | 5w | 2013-02-18 | 2013-03-22 | 33 | 2013-03-04 | 2013-04-05 | 5w | 0d |  |
| 36 | 36 - Adjustment after test A | 3w | 2013-02-18 | 2013-03-08 | 33 | 2013-03-04 | 2013-03-22 | 3w | 10d |  |
| 37 | 37 - Adjustment after test B | 3w | 2013-02-25 | 2013-03-15 | 34 | 2013-03-11 | 2013-03-29 | 3w | 5d |  |
| 38 | 38 - Complete/Systematical test | 3w | 2013-03-25 | 2013-04-12 | 35, 36, 37 | 2013-04-08 | 2013-04-26 | 3w | 0d |  |
| 39 | 39 - Track adjustment | 3w | 2013-04-15 | 2013-05-03 | 38 | 2013-04-29 | 2013-05-17 | 3w | 5d |  |
| 40 | 40 - Car adjustment | 3w | 2013-04-15 | 2013-05-03 | 38 | 2013-04-29 | 2013-05-17 | 3w | 5d |  |
| 41 | 41 - Software/electrical adjustment | 4w | 2013-04-15 | 2013-05-10 | 38 | 2013-04-29 | 2013-05-24 | 4w | 0d |  |
| 42 | 42 - System documentation | 3w | 2013-04-15 | 2013-05-03 | 38 | 2013-04-29 | 2013-05-17 | 3w | 5d | 0d |
| 43 | 43 - Green area, pavement, fence | 3w | 2013-04-15 | 2013-05-03 | 38 | 2013-04-29 | 2013-05-17 | 3w | 15d |  |
| 44 | 44 - Safety Standards acceptance | 2w | 2013-05-13 | 2013-05-24 | 39, 40, 41, 42 | 2013-05-27 | 2013-06-07 | 2w | 0d |  |
| 45 | 45 - Briefing and traning | 2w | 2013-05-06 | 2013-05-17 | 42 | 2013-05-20 | 2013-05-31 | 2w | 5d |  |
| 46 | 46 - Acceptance and delivery to the client | 1w | 2013-05-27 | 2013-05-31 | 43, 44, 45 | 2013-06-10 | 2013-06-14 | 1w | 0d |  |
